# Proyecto3_2

Schedule from MS Project, 2015-02-18 to 2015-02-18.

## Calendars

- Estándar: Mon-Fri 09:00-13:00, 15:00-19:00; Sat-Sun off.

## Schedule

| ID | WBS | Task | Type | Duration | Start | Finish | Total slack |
| --- | --- | --- | --- | --- | --- | --- | --- |
| 1 | 1 | **Responsabilidad de la dirección** |  | 1d? | 2015-02-18 | 2015-02-18 | 0d |
| 2 | 1.1 | 1 reunión con cliente | manual | 1d? | 2015-02-18 | 2015-02-18 |  |
| 3 | 1.2 | Presentación de proyecto al cliente | manual | 1d? | 2015-02-18 | 2015-02-18 |  |
| 4 | 1.3 | Gastos indirectos | manual | 1d? | 2015-02-18 | 2015-02-18 |  |
| 5 | 1.4 | Taquillas y equipos instalados | manual | 1d? | 2015-02-18 | 2015-02-18 |  |
| 6 | 1.5 | Finalización de sala 3D | manual | 1d? | 2015-02-18 | 2015-02-18 |  |
| 7 | 1.6 | Finalización de sala digital | manual | 1d? | 2015-02-18 | 2015-02-18 |  |
| 8 | 1.7 | Finalización de sala VO | manual | 1d? | 2015-02-18 | 2015-02-18 |  |
| 9 | 1.8 | Entrega de diseños web | manual | 1d? | 2015-02-18 | 2015-02-18 |  |
| 10 | 1.9 | Entrega final | manual | 1d? | 2015-02-18 | 2015-02-18 |  |
| 11 | 2 | **Gestión de recursos** |  | 1d? | 2015-02-18 | 2015-02-18 | 0d |
| 12 | 2.1 | Busqueda de proveedores de máquinas expendedoras | manual | 1d | 2015-02-18 | 2015-02-18 |  |
| 13 | 2.2 | Busqueda de proveedores de ordenadores | manual | 1d | 2015-02-18 | 2015-02-18 |  |
| 14 | 2.3 | Busqueda de proveedores de muebles | manual | 1d | 2015-02-18 | 2015-02-18 |  |
| 15 | 2.4 | Busqueda de proveedores de proyectores | manual | 1d? | 2015-02-18 | 2015-02-18 |  |
| 16 | 2.5 | Busqueda de empresas de electricidad | manual | 1d? | 2015-02-18 | 2015-02-18 |  |
| 17 | 2.6 | Busqueda de instaladores de aire acondicionado | manual | 1d? | 2015-02-18 | 2015-02-18 |  |
| 18 | 2.7 | Busqueda de instaladores de moqueta/sillones | manual | 1d? | 2015-02-18 | 2015-02-18 |  |
| 19 | 2.8 | Busqueda de cursos .NET |  | 1d | 2015-02-18 | 2015-02-18 | 0d |
| 20 | 2.9 | Contratación de instaladores eléctricos | manual | 1d? | 2015-02-18 | 2015-02-18 |  |
| 21 | 2.10 | Contratación de instaladores de AC | manual | 1d | 2015-02-18 | 2015-02-18 |  |
| 22 | 2.11 | Contratación de instaladores moqueda/sillones | manual | 1d | 2015-02-18 | 2015-02-18 |  |
| 23 | 2.12 | Matriculación en cursos | manual | 1d | 2015-02-18 | 2015-02-18 |  |
| 24 | 2.13 | Cursos de .NET | manual | 1d | 2015-02-18 | 2015-02-18 |  |

| ID | WBS | Task | Type | Duration | Start | Finish | Total slack |
| --- | --- | --- | --- | --- | --- | --- | --- |
| 25 | 3 | **Realización del producto** |  | 1d? | 2015-02-18 | 2015-02-18 | 0d |
| 26 | 3.1 | Planificación instalación de máquinas | manual | 1d? | 2015-02-18 | 2015-02-18 |  |
| 27 | 3.2 | Planificación instalación de salas | manual | 1d? | 2015-02-18 | 2015-02-18 |  |
| 28 | 3.3 | Planificación portal web | manual | 1d? | 2015-02-18 | 2015-02-18 |  |
| 29 | 3.4 | Compra de las máquinas | manual | 1d? | 2015-02-18 | 2015-02-18 |  |
| 30 | 3.5 | Compra de ordenadores | manual | 1d? | 2015-02-18 | 2015-02-18 |  |
| 31 | 3.6 | Compra de muebles | manual | 1d | 2015-02-18 | 2015-02-18 |  |
| 32 | 3.7 | Instalación de máquinas |  | 1d | 2015-02-18 | 2015-02-18 | 0d |
| 33 | 3.8 | Instalación de ordenadores |  | 1d | 2015-02-18 | 2015-02-18 | 0d |
| 34 | 3.9 | Instalación de mobiliario |  | 1d | 2015-02-18 | 2015-02-18 | 0d |
| 35 | 3.10 | **Sala 3d** |  | 1d? | 2015-02-18 | 2015-02-18 | 0d |
| 36 | 3.10.1 | Comprar proyector y gafas | manual | 1d? | 2015-02-18 | 2015-02-18 |  |
| 37 | 3.10.2 | Poner butacas | manual | 1d? | 2015-02-18 | 2015-02-18 |  |
| 38 | 3.10.3 | Instalar aire acondicionado | manual | 1d? | 2015-02-18 | 2015-02-18 |  |
| 39 | 3.10.4 | Moqueta | manual | 1d | 2015-02-18 | 2015-02-18 |  |
| 40 | 3.10.5 | Iluminado | manual | 1d | 2015-02-18 | 2015-02-18 |  |
| 41 | 3.10.6 | Limpieza | manual | 1d | 2015-02-18 | 2015-02-18 |  |
| 42 | 3.11 | **Sala digital** |  | 1d? | 2015-02-18 | 2015-02-18 | 0d |
| 43 | 3.11.1 | Compra de proyector | manual | 1d? | 2015-02-18 | 2015-02-18 |  |
| 44 | 3.11.2 | Poner butacas | manual | 1d | 2015-02-18 | 2015-02-18 |  |
| 45 | 3.11.3 | Instalar aire acondicionado | manual | 1d | 2015-02-18 | 2015-02-18 |  |
| 46 | 3.11.4 | Moqueta | manual | 1d | 2015-02-18 | 2015-02-18 |  |
| 47 | 3.11.5 | Iluminado | manual | 1d | 2015-02-18 | 2015-02-18 |  |
| 48 | 3.11.6 | Limpieza | manual | 1d | 2015-02-18 | 2015-02-18 |  |

| ID | WBS | Task | Type | Duration | Start | Finish | Total slack |
| --- | --- | --- | --- | --- | --- | --- | --- |
| 49 | 3.12 | **Sala VO** |  | 1d? | 2015-02-18 | 2015-02-18 | 0d |
| 50 | 3.12.1 | Compra de proyector | manual | 1d? | 2015-02-18 | 2015-02-18 |  |
| 51 | 3.12.2 | Poner butacas | manual | 1d | 2015-02-18 | 2015-02-18 |  |
| 52 | 3.12.3 | Instalar aire acondicionado | manual | 1d | 2015-02-18 | 2015-02-18 |  |
| 53 | 3.12.4 | Moqueta | manual | 1d | 2015-02-18 | 2015-02-18 |  |
| 54 | 3.12.5 | Iluminado | manual | 1d | 2015-02-18 | 2015-02-18 |  |
| 55 | 3.12.6 | Limpieza | manual | 1d | 2015-02-18 | 2015-02-18 |  |
| 56 | 3.13 | **Portal web** |  | 1d? | 2015-02-18 | 2015-02-18 | 0d |
| 57 | 3.13.1 | Compra de ordenadores para SEINGESA | manual | 1d? | 2015-02-18 | 2015-02-18 |  |
| 58 | 3.13.2 | Diseño web (cliente) | manual | 1d | 2015-02-18 | 2015-02-18 |  |
| 59 | 3.13.3 | Diseño web (gráfico) | manual | 1d | 2015-02-18 | 2015-02-18 |  |
| 60 | 3.13.4 | Diseño web (servidor) | manual | 1d | 2015-02-18 | 2015-02-18 |  |
| 61 | 3.13.5 | Edición de videos | manual | 1d | 2015-02-18 | 2015-02-18 |  |
| 62 | 3.13.6 | Publicación de videos | manual | 1d | 2015-02-18 | 2015-02-18 |  |
| 63 | 3.13.7 | Adquisición de recursos multimedia | manual | 1d | 2015-02-18 | 2015-02-18 |  |
| 64 | 3.13.8 | Programación web (cliente) | manual | 1d? | 2015-02-18 | 2015-02-18 |  |
| 65 | 3.13.9 | Entrega de web (1) | manual | 1d | 2015-02-18 | 2015-02-18 |  |
| 66 | 3.13.10 | Programación compra de entradas | manual | 1d | 2015-02-18 | 2015-02-18 |  |
| 67 | 3.13.11 | Programación de opiniones | manual | 1d | 2015-02-18 | 2015-02-18 |  |
| 68 | 3.13.12 | Programación de avisos | manual | 1d | 2015-02-18 | 2015-02-18 |  |
| 69 | 3.13.13 | Programación control de actualizaciones (peliculas y sesiones) | manual | 1d | 2015-02-18 | 2015-02-18 |  |
| 70 | 3.13.14 | Programación de estadísticas | manual | 1d | 2015-02-18 | 2015-02-18 |  |
| 71 | 3.13.15 | Programación web (servidor) | manual | 1d | 2015-02-18 | 2015-02-18 |  |
| 72 | 3.13.16 | Terminar programación cliente | manual | 1d | 2015-02-18 | 2015-02-18 |  |
| 73 | 3.13.17 | Terminar programación servidor | manual | 1d | 2015-02-18 | 2015-02-18 |  |
| 74 | 3.13.18 | Entrega de web (2) | manual | 1d | 2015-02-18 | 2015-02-18 |  |
| 75 | 3.13.19 | Pruebas de web (1) | manual | 1d | 2015-02-18 | 2015-02-18 |  |
| 76 | 3.13.20 | Compra de PC's | manual | 1d | 2015-02-18 | 2015-02-18 |  |
| 77 | 3.13.21 | Compra de servidor | manual | 1d | 2015-02-18 | 2015-02-18 |  |
| 78 | 3.13.22 | Instalar SO en servidor | manual | 1d | 2015-02-18 | 2015-02-18 |  |
| 79 | 3.13.23 | Configurar servidor | manual | 1d | 2015-02-18 | 2015-02-18 |  |
| 80 | 3.13.24 | Configurar router | manual | 1d | 2015-02-18 | 2015-02-18 |  |
| 81 | 3.13.25 | Prueba de la instalación de servidor | manual | 1d | 2015-02-18 | 2015-02-18 |  |
| 82 | 3.13.26 | Instalación de web en servidor | manual | 1d | 2015-02-18 | 2015-02-18 |  |
| 83 | 3.13.27 | Entrega web (3) | manual | 1d | 2015-02-18 | 2015-02-18 |  |
| 84 | 3.13.28 | Pruebas de web (2) | manual | 1d | 2015-02-18 | 2015-02-18 |  |
